# AD_Migration_Plan_Draft

Schedule from MS Project, 2012-03-24 to 2012-07-17.

## Calendars

- Standard: Mon-Fri 08:00-12:00, 13:00-17:00; Sat-Sun off.

## Schedule

| ID | WBS | Task | Type | Duration | Start | Finish |
| --- | --- | --- | --- | --- | --- | --- |
| 1 | 1 | AAA AD Migration - Modified | manual | 75d | 2012-04-04 08:00 | 2012-07-17 17:00 |
| 2 | 2 | **Assesment and Discovery Phase** |  | 5d | 2012-04-04 08:00 | 2012-04-10 17:00 |
| 3 | 2.1 | Assesment and discovery of old environment | manual | 1d | 2012-04-04 08:00 | 2012-04-04 17:00 |
| 4 | 2.2 | Build Design Document | manual | 1d | 2012-04-05 08:00 | 2012-04-05 17:00 |
| 5 | 2.3 | Approval of Design Document | manual | 2d | 2012-04-06 08:00 | 2012-04-09 17:00 |
| 6 | 2.4 | Trust Relationship Discussion and Approval | manual | 1d | 2012-04-10 08:00 | 2012-04-10 17:00 |
| 7 | 3 | **Readiness** |  | 5d | 2012-04-11 08:00 | 2012-04-17 17:00 |
| 8 | 3.1 | Media and License for OS | manual | 0.5d | 2012-04-11 08:00 | 2012-04-11 12:00 |
| 9 | 3.2 | Media and Licenses from Quest | manual | 0.5d | 2012-04-11 08:00 | 2012-04-11 12:00 |
| 10 | 3.3 | Server Hardware Avilability in Datacenter | manual | 1d | 2012-04-12 08:00 | 2012-04-12 17:00 |
| 11 | 3.4 | Pilot user Inventory | manual | 0.5d | 2012-04-12 08:00 | 2012-04-12 12:00 |
| 12 | 3.5 | Account ID for Migration team | manual | 0.5d | 2012-04-13 08:00 | 2012-04-13 12:00 |
| 13 | 3.6 | Network IP Address for All Devices | manual | 1d | 2012-04-13 08:00 | 2012-04-13 17:00 |
| 14 | 3.7 | Network and SAN resource Avilability | manual | 0.25d | 2012-04-16 08:00 | 2012-04-16 10:00 |
| 15 | 3.8 | All Inventory | manual | 0.25d | 2012-04-16 08:00 | 2012-04-16 10:00 |
| 16 | 3.9 | Design Document | manual | 0.5d | 2012-04-16 13:00 | 2012-04-16 17:00 |
| 17 | 4 | **Build Phase** |  | 13d | 2012-04-18 08:00 | 2012-05-04 17:00 |
| 18 | 4.1 | Datacenter Readiness and pre-requsite check | manual | 0.2d | 2012-04-18 08:00 | 2012-04-18 09:36 |
| 19 | 4.2 | VMWARE Installation ( ESX Farm ) at Glendale | manual | 0.2d | 2012-04-18 08:00 | 2012-04-18 09:36 |
| 20 | 4.3 | OS Installation at Glendale | manual | 0.2d | 2012-04-18 08:00 | 2012-04-18 09:36 |
| 21 | 4.4 | Network Installation at Glendale | manual | 0.2d | 2012-04-18 08:00 | 2012-04-18 09:36 |
| 22 | 4.5 | Storage Provisioning Glendale | manual | 0.2d | 2012-04-18 08:00 | 2012-04-18 09:36 |
| 23 | 4.6 | **QA Build at Glendale** |  | 5d | 2012-04-19 08:00 | 2012-04-25 17:00 |
| 24 | 4.6.1 | Install the Domain controller Services | manual | 0.5d | 2012-04-19 08:00 | 2012-04-19 12:00 |
| 25 | 4.6.2 | Configure the DNS | manual | 0.5d | 2012-04-19 08:00 | 2012-04-19 12:00 |
| 26 | 4.6.3 | Test the Various Services | manual | 0.5d | 2012-04-20 08:00 | 2012-04-20 12:00 |
| 27 | 4.6.4 | Install the Service Patch and Service Packs | manual | 0.5d | 2012-04-20 08:00 | 2012-04-20 12:00 |
| 28 | 4.6.5 | Check the Server Health , Event Log | manual | 0.5d | 2012-04-23 08:00 | 2012-04-23 12:00 |
| 29 | 4.6.6 | Server Hardening | manual | 0.5d | 2012-04-23 08:00 | 2012-04-23 12:00 |
| 30 | 4.6.7 | Create the Respective OUs and containers | manual | 1d | 2012-04-24 08:00 | 2012-04-24 17:00 |
| 31 | 4.6.8 | Apply the GPOs and Login Scripts | manual | 1d | 2012-04-25 08:00 | 2012-04-25 17:00 |

Notes:
- 18: IE Activity
- 19: IE Activity
- 20: IE Activity
- 21: IE Activity
- 22: IE Activity

| ID | WBS | Task | Type | Duration | Start | Finish |
| --- | --- | --- | --- | --- | --- | --- |
| 32 | 4.7 | **Prod AD Installation at Glendale** |  | 5d | 2012-04-26 08:00 | 2012-05-02 17:00 |
| 33 | 4.7.1 | Install the Domain controller Services | manual | 0.5d | 2012-04-26 08:00 | 2012-04-26 12:00 |
| 34 | 4.7.2 | Configure the DNS | manual | 0.5d | 2012-04-26 08:00 | 2012-04-26 12:00 |
| 35 | 4.7.3 | Test the Various Services | manual | 0.5d | 2012-04-27 08:00 | 2012-04-27 12:00 |
| 36 | 4.7.4 | Install the Service Patch and Service Packs | manual | 0.5d | 2012-04-27 08:00 | 2012-04-27 12:00 |
| 37 | 4.7.5 | Check the Server Health , Event Log | manual | 0.5d | 2012-04-30 08:00 | 2012-04-30 12:00 |
| 38 | 4.7.6 | Server Hardening | manual | 0.5d | 2012-04-30 08:00 | 2012-04-30 12:00 |
| 39 | 4.7.7 | Create the Respective OUs and containers | manual | 1d | 2012-05-01 08:00 | 2012-05-01 17:00 |
| 40 | 4.7.8 | Apply the GPOs and Login Scripts | manual | 1d | 2012-05-02 08:00 | 2012-05-02 17:00 |
| 41 | 4.8 | QMM-Active Directory | manual | 2d | 2012-05-03 08:00 | 2012-05-04 17:00 |
| 42 | 5 | **Migration** |  | 15d | 2012-05-07 08:00 | 2012-05-25 17:00 |
| 43 | 5.1 | **QA Test Migration** |  | 10d | 2012-05-07 08:00 | 2012-05-18 17:00 |
| 44 | 5.1.1 | Migrate the Test Accounts | manual | 4d | 2012-05-07 08:00 | 2012-05-10 17:00 |
| 45 | 5.1.2 | Check for Any issue | manual | 4d | 2012-05-11 08:00 | 2012-05-16 17:00 |
| 46 | 5.1.3 | Fine Tune the Migration | manual | 2d | 2012-05-16 08:00 | 2012-05-17 17:00 |
| 47 | 5.2 | **Pilot Migration ( 100 Users )** |  | 5d | 2012-05-21 08:00 | 2012-05-25 17:00 |
| 48 | 5.2.1 | Finalize list of Pilot users | manual | 0.5d | 2012-05-21 08:00 | 2012-05-21 12:00 |
| 49 | 5.2.2 | Communication to the pilot users | manual | 0.5d | 2012-05-21 08:00 | 2012-05-21 12:00 |
| 50 | 5.2.3 | Migrate the AD Accounts | manual | 1d | 2012-05-22 08:00 | 2012-05-22 17:00 |
| 51 | 5.2.4 | Test application access and troubleshoot | manual | 1d | 2012-05-23 08:00 | 2012-05-23 17:00 |
| 52 | 5.2.5 | Trouble and Support If require | manual | 1d | 2012-05-24 08:00 | 2012-05-24 17:00 |
| 53 | 5.2.6 | Lesson Learned and Fine Tune the plan | manual | 0.5d | 2012-05-25 08:00 | 2012-05-25 12:00 |
| 54 | 5.2.7 | Sign Off the Approach | manual | 0.5d | 2012-05-25 08:00 | 2012-05-25 12:00 |
| 55 | 6 | Production Migration | manual | 25d | 2012-05-28 08:00 | 2012-06-29 17:00 |
| 56 | 7 | AD Box Shift to NJDC | manual | 2d | 2012-07-02 08:00 | 2012-07-03 17:00 |
| 57 | 8 | Any Additional Domain Controller Installation | manual | 2d | 2012-03-24 08:00 | 2012-03-26 17:00 |
| 58 | 9 | AD Installation at DR Site | manual | 10d | 2012-07-04 08:00 | 2012-07-17 17:00 |

Notes:
- 56: Virtual/Physical?
